# CSM 3.2

Schedule from MS Project, 2006-04-20 to 2006-12-22, A marks actual dates.
NCI

## Calendars

- Standard: Mon-Fri 08:00-12:00, 13:00-17:00; Sat-Sun off. Exceptions (off unless hours are given): 2006-05-29.

## Resources

| Resource |
| --- |
| Charles |
| Avinash |
| Kunal |
| Orlando |
| Steven |
| Denise |
| BioPharm |
| Kuanl |
| Steve |
| QA |
| Tech Writing NCICB |
| Ch |

## Schedule

| ID | WBS | Task | Type | Duration | Start | Finish | Predecessors | Complete | Remaining | Total slack | Free slack | Constraint | Resources | Work | Actual work |
| --- | --- | --- | --- | --- | --- | --- | --- | --- | --- | --- | --- | --- | --- | --- | --- |
| 1 | 1 | **CSM 3.2** |  | 175d? | 2006-04-20 A | 2006-12-22 |  | 26% | 129.24d? | 0d |  |  |  | 4176.6h | 1193.4h |
| 2 | 1.1 | **Elaboration** |  | 55.95d? | 2006-04-20 A | 2006-07-07 |  | 84% | 8.86d? | 119.05d |  |  |  | 1223h | 1107.8h |
| 3 | 1.1.1 | **Iteration 1** |  | 34d? | 2006-04-20 A | 2006-06-07 |  | 75% | 8.56d? | 141d |  |  |  | 638.8h | 558.8h |
| 4 | 1.1 | Kick off | milestone | 0d | 2006-04-20 A | 2006-04-20 A |  | 100% |  |  |  | start no earlier than 2006-04-20 | Denise; Charles; Orlando; Steven; Avinash |  |  |
| 5 | 1.1.1.2 | **21 CFR Part 11** |  | 34d | 2006-04-20 A | 2006-06-07 |  | 35% | 22.1d | 141d |  |  |  | 205.6h | 173.6h |
| 6 | 1.1.1.2.1 | Preperation |  | 7d | 2006-04-20 A | 2006-04-28 A |  | 100% |  |  |  |  | Charles [10%]; Orlando; Steven; Kunal | 173.6h | 173.6h |
| 7 | 1.1.1.2.2 | Kickoff Meeting With Biopharm | milestone | 0d | 2006-05-01 A | 2006-05-01 A |  | 100% |  |  |  | start no earlier than 2006-05-01 | Charles [10%]; Orlando; Steven; Kunal |  |  |
| 8 | 1.1.1.2.3 | Biopharm resources allocated | milestone | 0d | 2006-05-15 | 2006-05-15 |  |  |  | 143d | 0d | start no earlier than 2006-05-15 | BioPharm |  |  |
| 9 | 1.1.1.2.4 | Deliver Materials |  | 3d | 2006-05-17 | 2006-05-19 | 8FS+2d |  |  | 143d | 0d |  | Steven | 24h |  |
| 10 | 1.1.1.2.5 | Provide Validation Support |  | 10d | 2006-05-22 | 2006-06-07 | 9 |  |  | 141d |  |  | Steven [10%] | 8h |  |
| 11 | 1.1.1.3 | **Project Scope** |  | 20d? | 2006-05-01 A | 2006-05-26 |  | 88% | 2.38d? | 148d |  |  |  | 382h | 334h |
| 12 | 1.1.1.3.1 | Create/Revise Candidate Requirements Document |  | 4d | 2006-05-01 A | 2006-05-04 A | 6 | 100% |  |  |  |  | Charles [10%]; Steven; Orlando; Kunal | 99.2h | 99.2h |
| 13 | 1.2 | Revised Scope w/Product Manager | milestone | 0d | 2006-05-04 A | 2006-05-04 A |  | 100% |  |  |  |  | Charles; Avinash |  |  |
| 14 | 1.1.1.3.3 | Define Elaboration Task Plan |  | 1d? | 2006-05-05 A | 2006-05-05 A | 12 | 100% |  |  |  |  | Charles [10%]; Orlando; Kunal; Steven | 24.8h | 24.8h |
| 15 | 1.1.1.3.4 | Create/Update Scope Document |  | 15d | 2006-05-08 A | 2006-05-26 A | 14 | 100% |  |  |  |  | Charles [10%] | 12h | 12h |
| 16 | 1.1.1.3.5 | Obtain Changes/Fixes from BMS and map to current scope |  | 4d | 2006-05-15 A | 2006-05-18 A |  | 100% |  |  |  | start no earlier than 2006-05-15 | Steven [90%] | 28.8h | 28.8h |
| 17 | 1.1.1.3.6 | **LOE/Requirements Gathering** |  | 14d | 2006-05-08 A | 2006-05-25 | 14 | 77% | 3.17d | 149d |  |  |  | 217.2h | 169.2h |
| 18 | 1.1.1.3.6.1 | Obtain exact JDK version for next release |  | 0.25d | 2006-05-08 A | 2006-05-08 A |  | 100% |  |  |  |  | Kunal | 2h | 2h |
| 19 | 1.1.1.3.6.2 | High Level Diagram of Grid-CSM Integration |  | 2d | 2006-05-08 A | 2006-05-10 A | 18 | 100% |  |  |  |  | Kunal | 16h | 16h |
| 20 | 1.1.1.3.6.3 | High Level Diagram of CSM Web Service |  | 1d | 2006-05-10 A | 2006-05-11 A | 19 | 100% |  |  |  |  | Kunal | 8h | 8h |
| 21 | 1.1.1.3.6.4 | Deliver Diagrams to Avinash | milestone | 0d | 2006-05-11 A | 2006-05-11 A | 20 | 100% |  |  |  |  | Kuanl |  |  |
| 22 | 1.1.1.3.6.5 | IMF Presentation |  | 2d | 2006-05-11 A | 2006-05-15 A | 21 | 100% |  |  |  |  | Kunal | 16h | 16h |
| 23 | 1.1.1.3.6.6 | Estimate Tying User to Application |  | 1d | 2006-05-15 A | 2006-05-16 A | 22 | 100% |  |  |  |  | Kunal | 8h | 8h |
| 24 | 1.1.1.3.6.7 | Estimate for Grid Integration/ Project Scope Doc |  | 6d | 2006-05-16 | 2006-05-24 | 23 |  |  | 150.75d |  |  | Kunal | 48h |  |
| 25 | 1.1.1.3.6.8 | Meet with Apps for Performance Requirements |  | 0.25d | 2006-05-11 A | 2006-05-11 A |  | 100% |  |  |  | start no earlier than 2006-05-11 | Kunal; Orlando | 4h | 4h |
| 26 | 1.1.1.3.6.9 | Prototyp Generic LDAP |  | 2.5d | 2006-05-08 A | 2006-05-10 A |  | 100% |  |  |  |  | Orlando | 20h | 20h |
| 27 | 1.1.1.3.6.10 | Estimate Auth Policy Caching |  | 3d | 2006-05-10 A | 2006-05-15 A | 26 | 100% |  |  |  |  | Orlando | 24h | 24h |
| 28 | 1.1.1.3.6.11 | Estimate CLM Logging to text file and Log Viewer Mods |  | 2d | 2006-05-15 A | 2006-05-17 A | 27 | 100% |  |  |  |  | Orlando | 16h | 16h |
| 29 | 1.1.1.3.6.12 | Estimate BMS Webservice Integration |  | 2.5d | 2006-05-17 A | 2006-05-19 A | 28 | 100% |  |  |  |  | Orlando | 20h | 20h |
| 30 | 1.1.1.3.6.13 | Estimate BMS Integration Work |  | 4d | 2006-05-22 A | 2006-05-25 A | 29 | 100% |  |  |  |  | Orlando; Charles [10%] | 35.2h | 35.2h |
| 31 | 1.1.1.4 | NCICB Management Review Complete | milestone | 0d | 2006-05-17 A | 2006-05-17 A |  | 100% |  |  |  | start no earlier than 2006-05-17 |  |  |  |
| 32 | 1.1.1.5 | Update Scope |  | 2.95d | 2006-05-26 A | 2006-05-31 A | 17 | 100% |  |  |  |  | Charles [10%]; Orlando; Kunal | 49.6h | 49.6h |
| 33 | 1.1.1.6 | User Feedback Sessions Complete | milestone | 0d | 2006-05-26 A | 2006-05-26 A |  | 100% |  |  |  | start no earlier than 2006-05-26 |  |  |  |
| 34 | 1.1.1.8 | Revise Task Plan |  | 2d | 2006-05-31 A | 2006-06-02 A | 32 | 100% |  |  |  |  | Charles [10%] | 1.6h | 1.6h |

| ID | WBS | Task | Type | Duration | Start | Finish | Predecessors | Complete | Constraint | Resources | Work | Actual work |
| --- | --- | --- | --- | --- | --- | --- | --- | --- | --- | --- | --- | --- |
| 35 | 1.1.2 | **Iteration 2** |  | 22.95d | 2006-05-19 A | 2006-06-21 A |  | 100% |  |  | 245h | 245h |
| 36 | 1.1.2.1 | **Detail Requirements** |  | 18.95d | 2006-05-19 A | 2006-06-15 A |  | 100% |  |  | 241h | 241h |
| 37 | 1.1.2.1.1 | **Define Use Cases** |  | 18.95d | 2006-05-19 A | 2006-06-15 A |  | 100% |  |  | 241h | 241h |
| 38 | 1.1.2.1.1.1 | **UPT** |  | 10.5d | 2006-05-19 A | 2006-06-05 A |  | 100% |  |  | 68.4h | 68.4h |
| 39 | 1.1.2.1.1.1.1 | Write Initial Draft 30% |  | 1.5d | 2006-05-19 A | 2006-05-22 A | 16 | 100% |  | Steven | 12h | 12h |
| 40 | 1.1.2.1.1.1.2 | Write Internal Review 60 % |  | 1.5d | 2006-05-22 A | 2006-05-23 A | 39 | 100% |  | Steven | 12h | 12h |
| 41 | 1.1.2.1.1.1.3 | Write Final Complete 100% |  | 2d | 2006-05-24 A | 2006-05-25 A | 40 | 100% |  | Steven | 16h | 16h |
| 42 | 1.1.2.1.1.1.4 | Review |  | 1d | 2006-05-26 A | 2006-05-31 A | 41 | 100% |  | Steven; Charles [10%] | 4.4h | 4.4h |
| 43 | 1.1.2.1.1.1.5 | Update per Review |  | 3d | 2006-05-31 A | 2006-06-05 A | 42 | 100% |  | Steven | 24h | 24h |
| 44 | 1.1.2.1.1.2 | **Web Service** |  | 7d | 2006-05-31 A | 2006-06-09 A |  | 100% |  |  | 64.2h | 64.2h |
| 45 | 1.1.2.1.1.2.1 | Write Internal Review 60% |  | 5d | 2006-05-31 A | 2006-06-07 A | 32 | 100% |  | Kunal | 40h | 40h |
| 46 | 1.1.2.1.1.2.2 | Write Final Complete 100% |  | 1d | 2006-06-07 A | 2006-06-08 A | 45 | 100% |  | Kunal | 8h | 8h |
| 47 | 1.1.2.1.1.2.3 | Review |  | 0.25d | 2006-06-08 A | 2006-06-09 A | 46 | 100% |  | Kunal; Steve; Charles [10%] | 4.2h | 4.2h |
| 48 | 1.1.2.1.1.2.4 | Update per Review |  | 0.75d | 2006-06-09 A | 2006-06-09 A | 47 | 100% |  | Kunal; Steve | 12h | 12h |
| 49 | 1.1.2.1.1.3 | **CSM APIs** |  | 7.5d | 2006-05-31 A | 2006-06-12 A |  | 100% |  |  | 68.2h | 68.2h |
| 50 | 1.1.2.1.1.3.1 | Write Initial Draft 30% |  | 2.5d | 2006-05-31 A | 2006-06-05 A | 32 | 100% |  | Orlando | 20h | 20h |
| 51 | 1.1.2.1.1.3.2 | Write Internal Review 60 % |  | 2d | 2006-06-05 A | 2006-06-07 A | 50 | 100% |  | Orlando | 16h | 16h |
| 52 | 1.1.2.1.1.3.3 | Write Final Complete 100% |  | 2d | 2006-06-07 A | 2006-06-09 A | 51 | 100% |  | Orlando | 16h | 16h |
| 53 | 1.1.2.1.1.3.4 | Review |  | 0.25d | 2006-06-09 A | 2006-06-09 A | 52 | 100% |  | Orlando; Steve; Charles [10%] | 4.2h | 4.2h |
| 54 | 1.1.2.1.1.3.5 | Update per Review |  | 0.75d | 2006-06-09 A | 2006-06-12 A | 53 | 100% |  | Orlando; Steve | 12h | 12h |
| 55 | 1.1.2.1.1.4 | **- Performance Enhancements** |  | 4d | 2006-06-09 A | 2006-06-15 A |  | 100% |  |  | 40.2h | 40.2h |
| 56 | 1.1.2.1.1.4.1 | Write Internal Review 60% |  | 2d | 2006-06-09 A | 2006-06-13 A | 44 | 100% |  | Kunal | 16h | 16h |
| 57 | 1.1.2.1.1.4.2 | Write Final Complete 100% |  | 1d | 2006-06-13 A | 2006-06-14 A | 56 | 100% |  | Kunal | 8h | 8h |
| 58 | 1.1.2.1.1.4.3 | Review |  | 0.25d | 2006-06-14 A | 2006-06-15 A | 57 | 100% |  | Kunal; Steve; Charles [10%] | 4.2h | 4.2h |
| 59 | 1.1.2.1.1.4.4 | Update per Review |  | 0.75d | 2006-06-15 A | 2006-06-15 A | 58 | 100% |  | Kunal; Steve | 12h | 12h |
| 60 | 1.1.2.3 | Revise Scope Document |  | 1d | 2006-06-14 A | 2006-06-15 A | 36FS-1d | 100% |  | Charles [10%] | 0.8h | 0.8h |
| 61 | 1.1.2.4 | Revised Scope Document Complete | milestone | 0d | 2006-06-13 A | 2006-06-13 A |  | 100% | start no earlier than 2006-06-13 |  |  |  |
| 62 | 1.1.2.7 | Revise Task Plan |  | 4d | 2006-06-15 A | 2006-06-21 A | 60 | 100% |  | Charles [10%] | 3.2h | 3.2h |
| 63 | 1.1.2.8 | Revised PM Project Plan Submitted | milestone | 0d | 2006-06-19 A | 2006-06-19 A |  | 100% | start no earlier than 2006-06-19 |  |  |  |

| ID | WBS | Task | Type | Duration | Start | Finish | Predecessors | Complete | Remaining | Total slack | Free slack | Constraint | Resources | Work | Actual work |
| --- | --- | --- | --- | --- | --- | --- | --- | --- | --- | --- | --- | --- | --- | --- | --- |
| 64 | 1.1.3 | **Iteration 3** |  | 19.5d | 2006-06-12 A | 2006-07-07 |  | 88% | 2.36d | 119.05d |  |  |  | 339.2h | 304h |
| 65 | 1.1.3.1 | **Test Plan** |  | 16d | 2006-06-15 A | 2006-07-07 |  | 75% | 4d | 119.05d |  |  |  | 113.6h | 96h |
| 66 | 1.1.3.1 | Review Testability of Requirements |  | 4d | 2006-06-15 A | 2006-06-21 A | 59 | 100% |  |  |  |  | Steven | 32h | 32h |
| 67 | 1.1.3.2 | Test Plan Development Intial Template Draft |  | 2d | 2006-06-21 A | 2006-06-23 A | 66 | 100% |  |  |  |  | Steven | 16h | 16h |
| 68 | 1.1.3.3 | Test Plan Development 80% Completion |  | 6d | 2006-06-23 A | 2006-07-03 A | 67 | 100% |  |  |  |  | Steven | 48h | 48h |
| 69 | 1.1.3.4 | Test Plan Development Internal Review 100% Completion |  | 2d | 2006-07-03 | 2006-07-05 | 68 |  |  | 119.05d | 0d |  | Charles [10%] | 1.6h |  |
| 70 | 1.1.3.5 | Test Plan Development Rework |  | 2d | 2006-07-05 | 2006-07-07 | 69 |  |  | 119.05d |  |  | Steven | 16h |  |
| 71 | 1.1.3.2 | **Design** |  | 12.55d | 2006-06-12 A | 2006-06-28 |  | 95% | 0.58d | 126d |  |  |  | 84h | 79.2h |
| 72 | 1.1.3.2.1 | **Create General Design Document** |  | 5d | 2006-06-12 A | 2006-06-19 A | 49 | 100% |  |  |  |  |  | 20h | 20h |
| 73 | 1.1.3.2.1.1 | Review Draft at 50% |  | 2.5d | 2006-06-12 A | 2006-06-14 A |  | 100% |  |  |  |  | Orlando | 20h | 20h |
| 74 | 1.1.3.2.1.2 | Complete Draft/Final Review |  | 2.5d | 2006-06-14 A | 2006-06-19 A | 73 | 100% |  |  |  |  |  |  |  |
| 75 | 1.1.3.2.2 | General Design Doc Posted for Review | milestone | 0d | 2006-06-19 A | 2006-06-19 A |  | 100% |  |  |  | start no earlier than 2006-06-19 | Orlando; Steve; Kunal |  |  |
| 76 | 1.1.3.2.3 | **Performance** |  | 5d | 2006-06-19 A | 2006-06-23 A | 75 | 100% |  |  |  |  |  | 40h | 40h |
| 77 | 1.1.3.7 | Performance Design Peparation |  | 3.5d | 2006-06-19 A | 2006-06-22 A | 55 | 100% |  |  |  |  | Kunal | 28h | 28h |
| 78 | 1.1.3.8 | Performance Design Internal Review |  | 0.5d | 2006-06-22 A | 2006-06-22 A | 77 | 100% |  |  |  |  | Kunal | 4h | 4h |
| 79 | 1.1.3.9 | Performance Design Rework |  | 1d | 2006-06-23 A | 2006-06-23 A | 78 | 100% |  |  |  |  | Kunal | 8h | 8h |
| 80 | 1.1.3.13 | CSM SAD |  | 3d | 2006-06-26 A | 2006-06-28 | 79 | 80% | 0.6d | 126d |  |  | Kunal | 24h | 19.2h |
| 81 | 1.1.3.3 | **UML Model** |  | 8.55d | 2006-06-19 A | 2006-06-30 |  | 91% | 0.78d | 125d |  |  |  | 17.6h | 16h |
| 82 | 1.1.2.5 | Update CSM Model |  | 2d | 2006-06-19 A | 2006-06-21 A | 74 | 100% |  |  |  |  | Orlando | 16h | 16h |
| 83 | 1.1.3.3.2 | Submit For Approval |  | 0.2d | 2006-06-21 | 2006-06-21 | 82 |  |  | 106.55d | 0d |  | Orlando | 1.6h |  |
| 84 | 1.1.2.6 | UML Model Changes Approved | milestone | 0d | 2006-06-30 | 2006-06-30 |  |  |  | 125d |  | start no earlier than 2006-06-30 |  |  |  |
| 85 | 1.1.3.6 | **Prototype** |  | 11.35d | 2006-06-21 A | 2006-07-06 |  | 91% | 1.06d | 2d |  |  |  | 120h | 108.8h |
| 86 | 1.1.3.6.1 | Auth Caching |  | 4d | 2006-06-29 A | 2006-07-05 A | 80 | 100% |  |  |  |  | Kunal | 32h | 32h |
| 87 | 1.1.3.6.2 | Auth Caching - Review and Baselining |  | 1d | 2006-07-06 A | 2006-07-06 A | 86 | 100% |  |  |  |  | Kunal | 8h | 8h |
| 88 | 1.1.3.6.3 | Open/Active Directory LDAP |  | 4d | 2006-06-28 A | 2006-07-05 | 91 | 90% | 0.4d | 2.35d | 0d |  | Orlando | 32h | 28.8h |
| 89 | 1.1.3.6.4 | Open/Active Directory LDAP - Code Review and Baselining |  | 1d | 2006-07-05 | 2006-07-06 | 88 |  |  | 104.35d | 0d |  | Orlando | 8h |  |
| 90 | 1.1.3.6.5 | Schema Support for SQL Server |  | 4d | 2006-06-21 A | 2006-06-27 A | 83 | 100% |  |  |  |  | Orlando | 32h | 32h |
| 91 | 1.1.3.6.6 | Schema Support for SQL Server - Code Review and Baselining |  | 1d | 2006-06-27 A | 2006-06-28 A | 90 | 100% |  |  |  |  | Orlando | 8h | 8h |
| 92 | 1.1.3.5 | Finalize Scope/Project Plan |  | 5d | 2006-06-19 A | 2006-06-23 A | 63 | 100% |  |  |  |  | Charles [10%] | 4h | 4h |
| 93 | 1.1.3.6 | Final 3.2 Scope/Project Plan to Gforge | milestone | 0d | 2006-06-26 A | 2006-06-26 A |  | 100% |  |  |  | start no earlier than 2006-06-26 |  |  |  |

| ID | WBS | Task | Type | Duration | Start | Finish | Predecessors | Complete | Remaining | Total slack | Free slack | Constraint | Resources | Work | Actual work |
| --- | --- | --- | --- | --- | --- | --- | --- | --- | --- | --- | --- | --- | --- | --- | --- |
| 94 | 1.2 | **Construction** |  | 112.05d | 2006-06-23 A | 2006-11-28 |  | 3% | 108.35d | 17d |  |  |  | 2273.6h | 85.6h |
| 95 | 1.2.1 | Production Support |  | 80d | 2006-07-12 | 2006-10-31 |  |  |  | 37d |  | start no earlier than 2006-07-12 | Orlando [15%]; Kunal [15%]; Steven [15%] | 273.6h |  |
| 96 | 1.2.2 | **Iteration 1** |  | 31d | 2006-06-23 A | 2006-08-07 |  | 18% | 25.47d | 98.05d |  |  |  | 512h | 85.6h |
| 97 | 1.2.2.1 | **Hibernate 3.1 Upgrade/JDK Backwards Compatibility/MySQL Upgrade Test** |  | 6d | 2006-07-06 | 2006-07-14 |  |  |  | 2.35d |  |  |  | 48h |  |
| 98 | 1.2.2.1.1 | Development |  | 5d | 2006-07-06 | 2006-07-13 | 89 |  |  | 104.35d | 0d |  | Orlando | 40h |  |
| 99 | 1.2.2.1.2 | Regression Testing |  | 1d | 2006-07-13 | 2006-07-14 | 98 |  |  | 104.35d | 0d |  | Orlando | 8h |  |
| 100 | 1.2.2.2 | **Open LDAP/Active Directory Authorization** |  | 4d | 2006-07-14 | 2006-07-20 |  |  |  | 2.35d |  |  |  | 32h |  |
| 101 | 1.2.2.2.1 | Design |  | 1d | 2006-07-14 | 2006-07-17 | 99 |  |  | 104.35d | 0d |  | Orlando | 8h |  |
| 102 | 1.2.2.2.2 | Development/Unit Test |  | 3d | 2006-07-17 | 2006-07-20 | 101 |  |  | 104.35d | 0d |  | Orlando | 24h |  |
| 103 | 1.2.2.3 | **Auth Policy Caching** |  | 6d | 2006-07-07 A | 2006-07-14 |  | 92% | 0.5d | 104d |  |  |  | 48h | 44h |
| 104 | 1.2.2.3.1 | Design |  | 1d | 2006-07-07 A | 2006-07-07 A | 87 | 100% |  |  |  |  | Kunal | 8h | 8h |
| 105 | 1.2.2.3.2 | Development/Unit Testing |  | 5d | 2006-07-10 A | 2006-07-14 | 104 | 90% | 0.5d | 104d | 0d |  | Kunal | 40h | 36h |
| 106 | 1.2.2.4 | **Expose Core Authorization Service as Web Service** |  | 10d | 2006-07-17 | 2006-07-28 |  |  |  | 104d |  |  |  | 80h |  |
| 107 | 1.2.2.4.1 | Design |  | 1d | 2006-07-17 | 2006-07-17 | 105 |  |  | 104d | 0d |  | Kunal | 8h |  |
| 108 | 1.2.2.4.2 | Development |  | 9d | 2006-07-18 | 2006-07-28 | 107 |  |  | 104d |  |  | Kunal | 72h |  |
| 109 | 1.2.2.4 | **BMS Web Service Integration** |  | 6d | 2006-07-20 | 2006-07-28 |  |  |  | 2.35d |  |  |  | 48h |  |
| 110 | 1.2.2.4.1 | Design |  | 1d | 2006-07-20 | 2006-07-21 | 102 |  |  | 3.35d | 0d |  | Orlando | 8h |  |
| 111 | 1.2.2.4.2 | Development/Unit Test |  | 5d | 2006-07-21 | 2006-07-28 | 110 |  |  | 3.35d | 0d |  | Orlando | 40h |  |
| 112 | 1.2.2.5 | Components Deployed on Dev Server | milestone | 0d | 2006-07-28 | 2006-07-28 | 111 |  |  | 3.35d | 0d |  | Kunal; Orlando |  |  |
| 113 | 1.2.2.6 | **Regression Test Complete Code Coverage** |  | 20d | 2006-06-23 A | 2006-07-21 |  | 40% | 12d | 58.05d |  |  |  | 104h | 41.6h |
| 114 | 1.2.2.6.1 | Implementation |  | 13d | 2006-06-23 A | 2006-07-21 | 67 | 40% | 7.8d | 98.05d | 0d |  | Steven | 104h | 41.6h |
| 115 | 1.2.2.7 | QA Test |  | 11d | 2006-07-21 | 2006-08-07 | 114 |  |  | 98.05d |  |  | Steven | 88h |  |
| 116 | 1.2.2.8 | Testing Support |  | 4d | 2006-07-28 | 2006-08-03 | 112 |  |  | 3.35d | 0d |  | Kunal; Orlando | 64h |  |
| 117 | 1.2.3 | **Iteration 2** |  | 52d | 2006-08-03 | 2006-10-16 | 116 |  |  | 2.35d |  |  |  | 944h |  |
| 118 | 1.2.3.1 | **Linking a User to Application Context** |  | 7d | 2006-08-03 | 2006-08-14 |  |  |  | 3.35d |  |  |  | 56h |  |
| 119 | 1.2.3.1.1 | Design |  | 2d | 2006-08-03 | 2006-08-07 | 116 |  |  | 3.35d | 0d |  | Orlando | 16h |  |
| 120 | 1.2.3.1.2 | Development/Unit Test |  | 5d | 2006-08-07 | 2006-08-14 | 119 |  |  | 3.35d | 0d |  | Orlando | 40h |  |

| ID | WBS | Task | Type | Duration | Start | Finish | Predecessors | Total slack | Free slack | Constraint | Resources | Work |
| --- | --- | --- | --- | --- | --- | --- | --- | --- | --- | --- | --- | --- |
| 121 | 1.2.3.2 | **Improve Exception Handling** |  | 5d | 2006-08-14 | 2006-08-21 |  | 3.35d |  |  |  | 40h |
| 122 | 1.2.3.2.1 | Development/Unit Test |  | 5d | 2006-08-14 | 2006-08-21 | 120 | 3.35d | 0d |  | Orlando | 40h |
| 123 | 1.2.3.3 | **Performance Enhancements** |  | 9d | 2006-08-03 | 2006-08-16 |  | 2.35d |  |  |  | 72h |
| 124 | 1.2.3.3.1 | **Fix Update Methods** |  | 3d | 2006-08-03 | 2006-08-08 |  | 2.35d |  |  |  | 24h |
| 125 | 1.2.3.3.1.1 | Development/Unit Test |  | 3d | 2006-08-03 | 2006-08-08 | 116 | 6.35d | 0d |  | Kunal | 24h |
| 126 | 1.2.3.3.2 | **SDK Instance Level Security Design** |  | 6d | 2006-08-08 | 2006-08-16 |  | 2.35d | 0d |  |  | 48h |
| 127 | 1.2.3.3.2.1 | Design |  | 6d | 2006-08-08 | 2006-08-16 | 125 | 6.35d |  |  | Kunal | 48h |
| 128 | 1.2.3.4 | **Grid SAML Assertion Support** |  | 15d | 2006-08-16 | 2006-09-06 |  | 2.35d |  |  |  | 120h |
| 129 | 1.2.3.4.1 | Design |  | 2d | 2006-08-16 | 2006-08-18 | 126 | 6.35d | 0d |  | Kunal | 16h |
| 130 | 1.2.3.4.2 | Development |  | 13d | 2006-08-18 | 2006-09-06 | 129 | 6.35d | 0d |  | Kunal | 104h |
| 131 | 1.2.3.5 | **Secure SDK interfaces** |  | 10d | 2006-09-06 | 2006-09-20 |  | 2.35d | 0d |  |  | 80h |
| 132 | 1.2.3.5.1 | Design |  | 2d | 2006-09-06 | 2006-09-08 | 130 | 6.35d | 0d |  | Kunal | 16h |
| 133 | 1.2.3.5.2 | Development |  | 8d | 2006-09-08 | 2006-09-20 | 132 | 6.35d | 0d |  | Kunal | 64h |
| 134 | 1.2.3.6 | **Add a new "Type" attribute to Protection Element** |  | 4d | 2006-09-20 | 2006-09-26 |  | 2.35d | 0d |  |  | 32h |
| 135 | 1.2.3.6.1 | Design |  | 1d | 2006-09-20 | 2006-09-21 | 131 | 2.35d | 0d |  | Kunal | 8h |
| 136 | 1.2.3.6.2 | Development |  | 3d | 2006-09-21 | 2006-09-26 | 135 | 2.35d |  |  | Kunal | 24h |
| 137 | 1.2.3.6 | **BMS Code Integration** |  | 15d | 2006-08-21 | 2006-09-11 |  | 3.35d |  |  |  | 120h |
| 138 | 1.2.3.6.1 | Design |  | 2d | 2006-08-21 | 2006-08-23 | 122 | 3.35d | 0d |  | Orlando | 16h |
| 139 | 1.2.3.6.2 | Development |  | 13d | 2006-08-23 | 2006-09-11 | 138 | 3.35d | 0d |  | Orlando | 104h |
| 140 | 1.2.3.7 | **Defect Fixes** |  | 16d | 2006-09-11 | 2006-10-03 |  | 2.35d | 0d |  |  | 160h |
| 141 | 1.2.3.7.1 | Development/Unit Test |  | 15d | 2006-09-11 | 2006-10-02 | 139 | 3.35d | 0d |  | Orlando | 120h |
| 142 | 1.2.3.7.2 | Improve the Deployment of CSM & Integration with Other Apps |  | 5d | 2006-09-26 | 2006-10-03 | 134 | 2.35d |  |  | Kunal | 40h |
| 143 | 1.2.3.8 | Deploy Components to Dev Server | milestone | 0d | 2006-10-02 | 2006-10-02 | 141 | 33.35d | 0d |  | Orlando; Kunal |  |
| 144 | 1.2.3.9 | **Testing** |  | 49.7d | 2006-08-07 | 2006-10-16 |  | 32.35d | 0d |  |  | 264h |
| 145 | 1.2.3.9.1 | Load & Component Test Development |  | 15d | 2006-08-07 | 2006-08-28 | 115 | 58.05d | 24.7d |  | Steven | 120h |
| 146 | 1.2.3.9.2 | QA Test Components |  | 9d | 2006-10-02 | 2006-10-13 | 145, 143 | 33.35d |  |  | QA | 72h |
| 147 | 1.2.3.9.3 | Test Support |  | 9d | 2006-10-03 | 2006-10-16 | 140 | 32.35d |  |  | Orlando [50%]; Kunal [50%] | 72h |
| 148 | 1.2.3.10.4 | Integration System Testing Comple (QA) | milestone | 0d | 2006-10-12 | 2006-10-12 |  | 35d |  | start no earlier than 2006-10-12 |  |  |

| ID | WBS | Task | Type | Duration | Start | Finish | Predecessors | Total slack | Free slack | Constraint | Resources | Work |
| --- | --- | --- | --- | --- | --- | --- | --- | --- | --- | --- | --- | --- |
| 149 | 1.2.4 | **Iteration 3** |  | 31.35d | 2006-10-16 | 2006-11-28 |  | 15.35d |  |  |  | 544h |
| 150 | 1.2.4.1 | **Internal System** |  | 14d | 2006-10-16 | 2006-11-03 |  | 32.35d |  |  |  | 224h |
| 151 | 1.2.4.1.1 | Execution |  | 14d | 2006-10-16 | 2006-11-03 | 144 | 34.35d |  |  | QA | 112h |
| 152 | 1.2.4.1.2 | Test Support |  | 14d | 2006-10-16 | 2006-11-03 | 144 | 32.35d | 0d |  | Orlando [50%]; Kunal [50%] | 112h |
| 153 | 1.2.5 | Internal System Testing Complete (QA Tier) | milestone | 0d | 2006-11-01 | 2006-11-01 |  | 37d |  | start no earlier than 2006-11-01 |  |  |
| 154 | 1.2.4.2 | Push Candidate to Staging |  | 2d | 2006-11-03 | 2006-11-07 | 152 | 32.35d |  |  | Kunal; Orlando | 32h |
| 155 | 1.2.6 | Release Candidate pushed to Stage Tier | milestone | 0d | 2006-11-03 | 2006-11-03 |  | 2d | 0d | start no earlier than 2006-11-03 |  |  |
| 156 | 1.2.4.4 | **Regression/UAT Testing** |  | 18d | 2006-11-03 | 2006-11-28 |  | 2d |  |  |  | 288h |
| 157 | 1.2.4.4.1 | Execution |  | 18d | 2006-11-03 | 2006-11-28 | 155 | 17d |  |  | QA | 144h |
| 158 | 1.2.4.4.2 | Test Support |  | 18d | 2006-11-03 | 2006-11-28 | 155 | 2d | 0d |  | Orlando [50%]; Kunal [50%] | 144h |
| 159 | 1.2.7 | UAT Complete | milestone | 0d | 2006-11-28 | 2006-11-28 |  | 18d |  | start no earlier than 2006-11-28 |  |  |
| 160 | 1.3 | **Transition** |  | 57.35d? | 2006-10-03 | 2006-12-22 |  | 0d |  |  |  | 680h |
| 161 | 1.3.1 | **Documentation** |  | 55d? | 2006-10-03 | 2006-12-19 |  | 2.35d |  |  |  | 440h |
| 162 | 1.3.1.1 | Write Draft Documentation/ Update User Guide |  | 9d | 2006-10-03 | 2006-10-16 | 140 | 2.35d | 0d |  | Orlando [50%]; Kunal [50%] | 72h |
| 163 | 1.3.1.2 | Draft Documentation/User Documentation Completed | milestone | 0d | 2006-10-12 | 2006-10-12 |  | 51d |  | start no earlier than 2006-10-12 |  |  |
| 164 | 1.3.1.3 | Review Technical/User Docs |  | 21d | 2006-10-16 | 2006-11-14 | 162 | 2.35d | 0d |  | Tech Writing NCICB | 168h |
| 165 | 1.3.1.4 | Review Technical/User Docs Complete | milestone | 0d | 2006-11-10 | 2006-11-10 |  | 30d |  | start no earlier than 2006-11-10 |  |  |
| 166 | 1.3.1.5 | Incorporate Comments to User Docs |  | 1d? | 2006-11-14 | 2006-11-15 | 164 | 2.35d | 0d |  | Orlando [50%]; Kunal [50%] | 8h |
| 167 | 1.3.1.6 | Incorporate Comments to User Docs Complete | milestone | 0d | 2006-11-28 | 2006-11-28 |  | 18d |  | start no earlier than 2006-11-28 |  |  |
| 168 | 1.3.1.7 | Finalize Documents |  | 24d | 2006-11-15 | 2006-12-19 | 166 | 2.35d |  |  | Tech Writing NCICB | 192h |
| 169 | 1.3.1.8 | Final Version of User Documents Complete | milestone | 0d | 2006-12-15 | 2006-12-15 |  | 5d |  | start no earlier than 2006-12-15 |  |  |
| 170 | 1.3.2 | Staging |  | 15d | 2006-11-29 | 2006-12-19 | 158 | 2d |  |  | Orlando; Kunal | 240h |
| 171 | 1.3.2 | Internal Staging Complete | milestone | 0d | 2006-12-19 | 2006-12-19 |  | 3d |  | start no earlier than 2006-12-19 |  |  |
| 172 | 1.3.3 | Push to Production | milestone | 0d | 2006-12-21 | 2006-12-21 |  | 1d |  | start no earlier than 2006-12-21 |  |  |
| 173 | 1.3.5 | Go Live | milestone | 0d | 2006-12-22 | 2006-12-22 |  | 0d |  | start no earlier than 2006-12-22 |  |  |
